# Simple Project Plan

Schedule from MS Project, 2021-04-18 to 2021-09-09, A marks actual dates.

## Calendars

- Standard: Mon-Thu 08:00-12:00, 13:00-17:00; Fri-Sat off; Sun 08:00-16:00.

## Resources

| Resource |
| --- |
| RC Team |
| Ankabut Team |
| Jinsor |
| Sanyo |
| Vinisha |
| Sanyo/Vinisha |

## Schedule

| ID | WBS | Task | Type | Duration | Start | Finish | Predecessors | Complete | Total slack | Free slack | Constraint | Resources | Work | Actual work |
| --- | --- | --- | --- | --- | --- | --- | --- | --- | --- | --- | --- | --- | --- | --- |
| 1 | 1 | **VM Migration Project Plan** |  | 8d | 2021-04-18 A | 2021-04-27 A |  | 100% |  |  |  |  | 88h | 88h |
| 2 | 1.1 | **Resource Analysis** |  | 8d | 2021-04-18 A | 2021-04-27 A |  | 100% |  |  |  | RC Team | 88h | 88h |
| 3 | 1.1.1 | Collecting current resource utilization of servers |  | 3d | 2021-04-18 A | 2021-04-20 A |  | 100% |  |  | start no earlier than 2021-04-18 | RC Team | 24h | 24h |
| 4 | 1.1.2 | Prepare questionaire and send it res users |  | 3d | 2021-04-21 A | 2021-04-25 A | 3 | 100% |  |  |  | RC Team | 24h | 24h |
| 5 | 1.1.3 | Make report as per user output |  | 2d | 2021-04-26 A | 2021-04-27 A | 4 | 100% |  |  | start no earlier than 2020-12-27 | RC Team | 16h | 16h |
| 6 | 2 | **Storage Assignment** |  | 1d | 2021-04-28 | 2021-04-28 |  |  | 47d |  |  |  | 8h |  |
| 7 | 2.1 | Assign storage to Research team to start building the Core services like Application installation and Home directories |  | 1d | 2021-04-28 | 2021-04-28 |  |  | 47d | 0d | start no earlier than 2021-04-28 | Ankabut Team | 8h |  |
| 8 | 3 | **Core services Building** |  | 43d | 2021-04-18 | 2021-06-15 |  |  | 20d |  |  | RC Team | 600h |  |
| 9 | 3.1 | Base Image server build for CentOS and Ubuntu |  | 5d | 2021-04-29 | 2021-05-05 | 7 |  | 91d |  |  | Ankabut Team | 40h |  |
| 10 | 3.2 | Hardening the Base Image |  | 1d | 2021-05-16 | 2021-05-16 |  |  | 0d |  | start no earlier than 2021-05-16 | Jinsor | 8h |  |
| 11 | 3.3 | Application Build server setup |  | 2d | 2021-05-17 | 2021-05-18 | 10 |  | 0d |  |  | Vinisha | 16h |  |
| 12 | 3.4 | Install applications on storage allocated which can be mounted to servers |  | 10d | 2021-05-19 | 2021-06-01 | 11 |  | 0d |  |  | Vinisha | 80h |  |
| 13 | 3.5 | Environment Module setup |  | 2d | 2021-06-02 | 2021-06-03 | 12 |  | 0d |  |  | Vinisha | 16h |  |
| 14 | 3.6 | Test working of Env modules |  | 1d | 2021-06-06 | 2021-06-06 | 13 |  | 0d |  |  | Vinisha | 8h |  |
| 15 | 3.7 | Test working of applications with Base-images |  | 2d | 2021-06-07 | 2021-06-08 | 14 |  | 0d |  |  | Sanyo/Vinisha | 16h |  |
| 16 | 3.8 | Home directory setup with assigned storage |  | 2d | 2021-05-17 | 2021-05-18 | 10 |  | 82d |  |  | Vinisha | 16h |  |
| 17 | 3.9 | Auto-mount setup and testing of user home and project |  | 1d | 2021-06-09 | 2021-06-09 | 15 |  | 0d |  |  | Sanyo/Vinisha | 8h |  |
| 18 | 3.10 | Check the permissions of user home and project areas with UID/GUID |  | 2d | 2021-06-10 | 2021-06-13 | 17 |  | 0d |  |  | Sanyo/Vinisha | 16h |  |
| 19 | 3.11 | ACL and quota setup for project and home area |  | 2d | 2021-06-14 | 2021-06-15 | 18 |  | 0d |  |  | Vinisha | 16h |  |
| 20 | 3.12 | Create Project group in AD for IDM authentication for Res VM's |  | 2d | 2021-04-18 | 2021-04-19 |  |  | 103d |  |  | Sanyo | 16h |  |
| 21 | 4 | **Research VM Redesign and rebuild** |  | 96d | 2021-04-29 | 2021-09-09 |  |  | 0d |  |  |  | 496h |  |
| 22 | 4.1 | Build imicro servers - res10, res11, res12, res19, res21, pdk-server |  | 3d | 2021-06-16 | 2021-06-20 | 19 |  | 0d |  |  | Vinisha | 24h |  |
| 23 | 4.2 | Build IT servers - Research22, ku2rpaaxv001, ku1ruwexv001, ku1rpwexv001, mill-prod2, linux-app1 |  | 5d | 2021-06-21 | 2021-06-27 | 22 |  | 0d |  |  | Vinisha | 40h |  |
| 24 | 4.3 | Understanding project Workflow with users |  | 5d | 2021-06-28 | 2021-07-04 | 23 |  | 0d |  |  | RC Team | 40h |  |
| 25 | 4.4 | Build Cesam servers - masdar-ocean, masdar-marine, masdar-rems2, masdar-roms, masdar-error |  | 5d | 2021-07-05 | 2021-07-11 | 24 |  | 0d |  |  | Vinisha | 40h |  |
| 26 | 4.5 | Build cesam servers - masdar-airquality, masdar-postproc, masdar-solartechsimulators, masdar-stratobus |  | 5d | 2021-07-12 | 2021-07-18 | 25 |  | 0d |  |  | Vinisha | 40h |  |
| 27 | 4.6 | Build Res windows servers - research15 , research17, research18 |  | 5d | 2021-07-19 | 2021-07-25 | 26 |  | 0d |  |  | Ankabut Team | 40h |  |
| 28 | 4.7 | Build Res windows servers - KU2RPAAWV005, KU2RPAAWV006, KU2RPAAWV007 | manual | 5d | 2021-07-26 | 2021-08-01 | 27 |  |  |  |  | Ankabut Team | 40h |  |
| 29 | 4.8 | Build Res windows servers - masdar-rems, masdar-pproc, masdar-fog, masdar-fog_restored | manual | 5d | 2021-08-02 | 2021-08-08 | 28 |  |  |  |  | Ankabut Team | 40h |  |
| 30 | 4.9 | LDAP Integration of VM's |  | 1d | 2021-08-09 | 2021-08-09 | 29 |  | 0d |  |  | Sanyo | 8h |  |
| 31 | 4.10 | Data Migration from Local Disks |  | 10d | 2021-08-10 | 2021-08-23 | 30 |  | 0d |  |  | Sanyo/Vinisha | 80h |  |
| 32 | 4.11 | Mount Application storage and test working of applications |  | 3d | 2021-08-24 | 2021-08-26 | 31 |  | 0d |  |  | Sanyo/Vinisha | 24h |  |
| 33 | 4.12 | Testing workflow with users |  | 10d | 2021-08-29 | 2021-09-09 | 32 |  | 0d |  |  | RC Team | 80h |  |
| 34 | 4.13 | Assign Project areas |  | 1d | 2021-04-29 | 2021-04-29 | 7 |  | 95d |  |  |  |  |  |
| 35 | 5 | Data Migration from Netapp NAS to Huawei NAS |  | 30d | 2021-04-29 | 2021-06-09 | 7 |  | 47d | 0d |  | Sanyo/Vinisha | 240h |  |

Notes:
- 2: This is a summary task. Use summary tasks to help organize your project into sections.
- 5: This is a milestone task. Set a task to 0d duration to mark an event in your project.
- 7: Home directories and Application directories will be mounted to all the Res servers / Dependencies: Every VM should have Home folder and Apps folder mounted on it. We should be able to assign quotas to home folders / Project area needed for servers (GB): Home mounts - 4TB, App - 2T. Total - 6T
- 9: Dependencies: Depends on standard Image build by IT
- 22: Project area needed for servers (GB): res10 - 300GB, res19 -500GB, res21- 500 GB, pdk-server - 500GB. Total - 1.8TB
- 23: Project area needed for servers (GB): Research22, ku2rpaaxv001 - 500GB , ku1ruwexv001 - 500GB , ku1rpwexv001 - 500GB , mill-prod2, linux-app1-1TB. Total - 1.6T
- 25: Project area needed for servers (GB): masdar-ocean - 1008GB , masdar-marine , masdar-rems2 - 116GB, masdar-roms, masdar-error. Total -1.1TB
- 26: Project area needed for servers (GB): masdar-airquality, masdar-postproc, masdar-solartechsimulators - 600GB, masdar-stratobus - 500GB Total - 1.1TB
- 27: Project area needed for servers (GB): research15 - 4.2TB, research17 - 4.2TB, research18 - 4.2TB. Total - 12.6TB
- 28: Project area needed for servers (GB): KU2RPAAWV005 - 500GB, KU2RPAAWV006 - 500GB, KU2RPAAWV007 - 500GB. Total - 1.5TB
- 29: Project area needed for servers (GB): masdar-rems- 100GB, masdar-pproc - 134TB, masdar-fog - 40.9, masdar-fog_restored. Total - 175TB
- 32: Dependencies: IT
- 34: Project area needed for servers (GB): 15.7TB (HPC not included)
- 35: Project area needed for servers (GB): 15.7TB (HPC not included)

| ID | WBS | Task | Duration | Start | Finish | Predecessors | Total slack | Free slack | Resources | Work |
| --- | --- | --- | --- | --- | --- | --- | --- | --- | --- | --- |
| 36 | 6 | **Migration of VM's that cannot be rebuild to cloud** | 19d | 2021-06-10 | 2021-07-06 |  | 47d |  |  | 152h |
| 37 | 6.1 | Migrate the Cesam web servers atlas-prod , cesam-web-prod, cesam-web-uat, cesam-geodb-prod, cesam-geodb-uat | 3d | 2021-06-10 | 2021-06-14 | 35 | 47d | 0d | Ankabut Team | 24h |
| 38 | 6.2 | Migrate the Cesam web servers recrema-web-prod, recrema-web-uat, mi-geodb-prod, mi-geodb-dev, moccae-web-uat, moccae-web-dev | 3d | 2021-06-15 | 2021-06-17 | 37 | 47d | 0d | Ankabut Team | 24h |
| 39 | 6.3 | Migrate the Irena webservers - atlas-global, irena-prod, irena-dev | 3d | 2021-06-20 | 2021-06-22 | 38 | 47d | 0d | Ankabut Team | 24h |
| 40 | 6.4 | Check services on the VM's and its working | 5d | 2021-06-23 | 2021-06-29 | 39 | 47d | 0d | RC Team | 40h |
| 41 | 6.5 | Hand over VM to users for testing | 5d | 2021-06-30 | 2021-07-06 | 40 | 47d |  | RC Team | 40h |

Notes:
- 37: Project area needed for servers (GB): atlas-prod - 6016 GB, cesam-web-prod - 500GB, cesam-web-uat - 500GB, cesam-geodb-prod- 500GB, cesam-geodb-uat- 500GB. Total - 8TB
- 38: Project area needed for servers (GB): recrema-web-prod - 500GB, recrema-web-uat - 115GB, mi-geodb-prod - 640GB, mi-geodb-dev - 640GB, moccae-web-uat - 115GB, moccae-web-dev - 115GB. Total - 2.25TB
- 39: Project area needed for servers (GB): atlas-global - 1008GB , irena-prod - 250GB, irena-dev - 250GB. Total - 1.5TB
